# 船坞智能监管 - 码头人员设备定位智慧管理系统

Schedule from a web Gantt chart, 2026-05-25 to 2026-10-13.
Saturdays and Sundays are off

## Schedule

| ID | WBS | Task | Duration | Start | Finish | Predecessors | Status |
| --- | --- | --- | --- | --- | --- | --- | --- |
| 2 | 1 | **需求调研** | 5d | 2026-05-25 | 2026-05-29 |  | waiting |
| 3 | 1.1 | 系统需求调研与确认 | 5d | 2026-05-25 | 2026-05-29 |  | waiting |
| 4 | 1.2 | 服务器配置及安装方案确认 | 5d | 2026-05-25 | 2026-05-29 |  | waiting |
| 5 | 1.3 | 监控安装施工方案调研 | 5d | 2026-05-25 | 2026-05-29 |  | waiting |
| 6 | 2 | **摄像头选型与采购** | 10d | 2026-06-01 | 2026-06-12 |  | waiting |
| 7 | 2.1 | 摄像头选型 | 2d | 2026-06-01 | 2026-06-02 | 5 | waiting |
| 8 | 2.2 | 设备采购与到货 | 8d | 2026-06-03 | 2026-06-12 | 7 | waiting |
| 9 | 3 | **摄像头安装** | 15d | 2026-07-10 | 2026-07-30 |  | waiting |
| 10 | 3.1 | 一阶段安装与调试（先安装20台用于调试） | 5d | 2026-07-10 | 2026-07-16 |  | waiting |
| 11 | 3.2 | 二阶段安装与调试 | 10d | 2026-07-17 | 2026-07-30 | 10 | waiting |
| 12 | 4 | **系统开发** | 32d | 2026-06-01 | 2026-07-14 |  | waiting |
| 13 | 4.1 | 系统架构设计 | 2d | 2026-06-01 | 2026-06-02 | 3 | waiting |
| 14 | 4.2 | 部署架构设计 | 2d | 2026-06-03 | 2026-06-04 | 13 | waiting |
| 15 | 4.3 | 人员管理模块开发 | 10d | 2026-06-05 | 2026-06-18 | 14 | waiting |
| 16 | 4.4 | 物品管理模块开发 | 10d | 2026-06-19 | 2026-07-02 | 15 | waiting |
| 17 | 4.5 | 安全与隐私模块开发 | 4d | 2026-07-03 | 2026-07-08 | 16 | waiting |
| 18 | 4.6 | 智能预警模块开发 | 4d | 2026-07-09 | 2026-07-14 | 17 | waiting |
| 19 | 5 | **算法开发** | 15d | 2026-06-05 | 2026-06-25 |  | waiting |
| 20 | 5.1 | 目标检测跟踪算法开发 | 7d | 2026-06-05 | 2026-06-15 |  | waiting |
| 21 | 5.2 | 人员身份识别算法开发 | 4d | 2026-06-16 | 2026-06-19 | 20 | waiting |
| 22 | 5.3 | 垃圾投放识别算法开发 | 4d | 2026-06-22 | 2026-06-25 | 21 | waiting |
| 23 | 6 | **系统测试** | 70d | 2026-06-01 | 2026-09-04 |  | waiting |
| 24 | 6.1 | 测试用例设计 | 10d | 2026-06-01 | 2026-06-12 | 3 | waiting |
| 25 | 6.2 | 集成测试 | 15d | 2026-06-26 | 2026-07-16 |  | waiting |
| 26 | 6.3 | 性能测试 | 15d | 2026-08-17 | 2026-09-04 |  | waiting |

| ID | WBS | Task | Duration | Start | Finish | Predecessors | Status |
| --- | --- | --- | --- | --- | --- | --- | --- |
| 27 | 7 | **系统验证** | 18d | 2026-09-07 | 2026-09-30 |  | waiting |
| 28 | 7.1 | 现场验证环境测试 | 7d | 2026-09-07 | 2026-09-15 | 26 | waiting |
| 29 | 7.2 | 性能验证 | 5d | 2026-09-16 | 2026-09-22 | 28 | waiting |
| 30 | 7.3 | 高可用及稳定性测试 | 4d | 2026-09-23 | 2026-09-28 | 29 | waiting |
| 31 | 7.4 | 安装部署测试 | 2d | 2026-09-29 | 2026-09-30 | 30 | waiting |
| 32 | 8 | **系统上线** | 4d | 2026-10-08 | 2026-10-13 |  | waiting |
| 33 | 8.1 | 系统线上环境部署 | 2d | 2026-10-08 | 2026-10-09 |  | waiting |
| 34 | 8.2 | 系统使用及运维培训 | 1d | 2026-10-12 | 2026-10-12 | 33 | waiting |
| 35 | 8.3 | 系统正式上线 | 1d | 2026-10-13 | 2026-10-13 | 34 | waiting |
